Schedule from MS Project, 2019-04-22 to 2019-05-09, 9 hours a day, A marks actual dates.
Microsoft

## Calendars

- Estándar: Mon-Fri 09:00-13:00, 14:00-19:00; Sat-Sun off. Exceptions (off unless hours are given): 2019-05-01 (Día del Trabajo).

## Resources

| Resource |
| --- |
| Analista QA |
| Analista Qc |
| Cliente |
| IFSE |

## Schedule

| ID | WBS | Task | Type | Duration | Start | Finish | Predecessors | Complete | Remaining | Total slack | Constraint | Resources | Work | Actual work | %Planeado | semaforo |
| --- | --- | --- | --- | --- | --- | --- | --- | --- | --- | --- | --- | --- | --- | --- | --- | --- |
| 1 | 1 | **DESCRIPCION DEL REQUERIMIENTO SOL21660-REQ23634** |  | 12.22d | 2019-04-22 09:00 A | 2019-05-09 11:00 |  | 82% | 2.19d | 0d |  |  | 32h | 2h | 82% | Verde |
| 2 | 1.1 | **HITO 1: Unificación de reporte de excepciones** |  | 12.22d | 2019-04-22 09:00 A | 2019-05-09 11:00 |  | 79% | 2.61d | 0d |  |  | 32h | 2h | 82% | Amarillo |
| 3 | 1.1.1 | **Análisis y Diseño / Requerimientos SW** |  | 2.22d | 2019-04-22 09:00 A | 2019-04-24 11:00 A |  | 100% |  |  |  |  | 2h | 2h | 100% | Verde |
| 4 | 1.1.1.1 | Transferencia de Conocimiento / Revisión Aplicativo | milestone | 0h | 2019-04-22 09:00 A | 2019-04-22 09:00 A |  | 100% |  |  | start no earlier than 2019-04-22 09:00 |  |  |  | 100% | Verde |
| 5 | 1.1.1.2 | Diseño Aplicativo /Reuniones con Cliente | milestone | 0h | 2019-04-22 09:00 A | 2019-04-22 09:00 A | 4 | 100% |  |  |  |  |  |  | 100% | Verde |
| 6 | 1.1.1.3 | Generación de ID |  | 18h | 2019-04-22 09:00 A | 2019-04-23 19:00 A | 5 | 100% |  |  |  |  |  |  | 100% | Verde |
| 7 | 1.1.1.4 | Revisión de 1PC |  | 2h | 2019-04-24 09:00 A | 2019-04-24 11:00 A | 6 | 100% |  |  |  | Analista QA | 2h | 2h | 100% | Verde |
| 8 | 1.1.2 | **Construcción y Pruebas** |  | 9.78d | 2019-04-24 11:00 A | 2019-05-08 19:00 |  | 76% | 2.39d | 0d |  |  | 28h |  | 80% | Amarillo |
| 9 | 1.1.2.1 | **Construcción** |  | 5.56d | 2019-04-24 11:00 A | 2019-05-02 17:00 A |  | 100% |  |  |  |  |  |  | 100% | Verde |
| 10 | 1.1.2.1.1 | 1.1 Modificar pantalla de reporte ef233.4gl |  | 2h | 2019-04-24 11:00 A | 2019-04-24 13:00 A | 7 | 100% |  |  |  |  |  |  | 100% | Verde |
| 11 | 1.1.2.1.2 | 1.2 Generar reporte detallado en Texto |  | 9h | 2019-04-24 14:00 A | 2019-04-25 13:00 A | 10 | 100% |  |  |  |  |  |  | 100% | Verde |
| 12 | 1.1.2.1.3 | 1.3 Generar reporte detallado en Excel |  | 15h | 2019-04-25 14:00 A | 2019-04-29 10:00 A | 11 | 100% |  |  |  |  |  |  | 100% | Verde |
| 13 | 1.1.2.1.4 | 1.4 Generar reporte no detallado en Excel |  | 15h | 2019-04-29 10:00 A | 2019-04-30 17:00 A | 12 | 100% |  |  |  |  |  |  | 100% | Verde |
| 14 | 1.1.2.1.5 | 1.3 Preparar Data |  | 9h | 2019-04-30 17:00 A | 2019-05-02 17:00 A | 13 | 100% |  |  |  |  |  |  | 100% | Verde |
| 15 | 1.1.2.2 | **Pruebas Internas** |  | 4.22d | 2019-05-02 17:00 A | 2019-05-08 19:00 |  | 43% | 2.39d | 0d |  |  | 28h |  | 53% | Amarillo |
| 16 | 1.1.2.2.1 | Documentación Pase o Pruebas |  | 9h | 2019-05-02 17:00 A | 2019-05-03 17:00 A | 14 | 100% |  |  |  |  |  |  | 100% | Verde |
| 17 | 1.1.2.2.2 | Pruebas Integración (DES) |  | 15h | 2019-05-03 17:00 A | 2019-05-07 13:00 | 16 | 50% | 7.5h | 0d |  |  |  |  | 73% | Rojo |
| 18 | 1.1.2.2.3 | Pruebas QA & QC |  | 14h | 2019-05-07 14:00 | 2019-05-08 19:00 | 17 |  |  | 0d |  | Analista QA; Analista Qc | 28h |  | 0% | Verde |
| 19 | 1.1.2.2.4 | **Ajustes y Reprueba** |  | 0d | 2019-05-08 19:00 | 2019-05-08 19:00 |  |  |  | 0d |  |  |  |  | 0% | Verde |
| 20 | 1.1.2.2.4.1 | Ajustes | milestone | 0h | 2019-05-08 19:00 | 2019-05-08 19:00 | 18 |  |  | 0d |  |  |  |  | 0% | Verde |
| 21 | 1.1.2.2.4.2 | Segunda Vuelta 2PC | milestone | 0h | 2019-05-08 19:00 | 2019-05-08 19:00 | 20 |  |  | 0d |  |  |  |  | 0% | Verde |
| 22 | 1.1.2.3 | Pruebas IQA | milestone | 0h | 2019-05-08 19:00 | 2019-05-08 19:00 | 21 |  |  | 0d |  |  |  |  | 0% | Verde |
| 23 | 1.1.3 | **Certificación Cliente - Pruebas Integrales** |  | 0.22d | 2019-05-09 09:00 | 2019-05-09 11:00 |  |  |  | 0d |  |  | 2h |  | 0% | Verde |
| 24 | 1.1.3.1 | Pruebas Integrales c/Líder TI |  | 2h | 2019-05-09 09:00 | 2019-05-09 11:00 | 22 |  |  | 0d |  | Cliente | 2h |  | 0% | Verde |

| ID | WBS | Task | Type | Duration | Start | Finish | Predecessors | Complete | Total slack | Constraint | Resources | %Planeado | semaforo |
| --- | --- | --- | --- | --- | --- | --- | --- | --- | --- | --- | --- | --- | --- |
| 25 | 1.1.3.2 | **Ajustes y Reprueba** |  | 0d | 2019-05-09 11:00 | 2019-05-09 11:00 |  |  | 0d |  |  | 0% | Verde |
| 26 | 1.1.3.2.1 | Ajustes | milestone | 0h | 2019-05-09 11:00 | 2019-05-09 11:00 | 24 |  | 0d |  | IFSE | 0% | Verde |
| 27 | 1.1.3.2.2 | Segunda Vuelta Certificación | milestone | 0h | 2019-05-09 11:00 | 2019-05-09 11:00 | 26 |  | 0d |  | Analista Qc | 0% | Verde |
| 28 | 1.2 | HITO 1: Entrega - Pruebas Integrales c/Líder TI/Lider Usuario | milestone | 0h | 2019-05-09 11:00 | 2019-05-09 11:00 | 27 |  | 0d |  |  | 0% | Verde |
| 29 | 1.3 | **Gestión** |  | 1d | 2019-04-29 09:00 A | 2019-04-29 19:00 A |  | 100% |  |  |  | 100% | Verde |
| 30 | 1.3.1 | Riesgos del Proyecto |  | 2h | 2019-04-29 09:00 A | 2019-04-29 11:00 A |  | 100% |  | start no earlier than 2019-04-29 09:00 |  | 100% | Verde |
| 31 | 1.3.2 | Gestión Proyecto |  | 4h | 2019-04-29 09:00 A | 2019-04-29 13:00 A |  | 100% |  | start no earlier than 2019-04-29 09:00 |  | 100% | Verde |
| 32 | 1.3.3 | Contingencia |  | 6h | 2019-04-29 09:00 A | 2019-04-29 16:00 A |  | 100% |  | start no earlier than 2019-04-29 09:00 |  | 100% | Verde |
| 33 | 1.3.4 | Estabilización y Soporte |  | 9h | 2019-04-29 09:00 A | 2019-04-29 19:00 A |  | 100% |  | start no earlier than 2019-04-29 09:00 |  | 100% | Verde |
